# IOTHome

Schedule from MS Project, 2018-07-02 to 2021-07-01, costs in €.

## Calendars

- Standard: Mon-Fri 08:00-12:00, 13:00-17:00; Sat-Sun off.

## Resources

| Resource | Group | Rate | Cost per use |
| --- | --- | --- | --- |
| Researcher1Vinci | Vinci | 9 |  |
| Researcher1Miele | Miele | 17 |  |
| Researcher1ETH | ETH | 9 |  |
| Researcher1ETF | ETF | 10 |  |
| Researcher1Schnieder | Schnieder | 10 |  |
| ResearchBundle4ETH | ETH | 36 |  |
| ResearchBundle4ETF | ETF | 40 |  |
| ResearchBundle4Vinci | Vinci | 36 |  |
| ResearchBundle4Aegis | Aegis | 36 |  |
| ResearchBundle3Vinci | Vinci | 27 |  |
| Dev1ETF | ETF | 7 |  |
| Dev2ETF | ETF | 7 |  |
| Dev1Schnieder | Schnieder | 7 |  |
| Dev1ETH | ETH | 7 |  |
| Dev1Aegis | Aegis | 7 |  |
| Dev1Vinci | Vinci | 7 |  |
| Dev2Schnieder | Schnieder | 7 |  |
| Dev2Vinci | Vinci | 7 |  |
| Dev2Aegis | Aegis | 7 |  |
| Dev3Aegis | Aegis | 7 |  |
| Dev3Vinci | Vinci | 7 |  |
| DevBundle5ETF | ETF | 35 |  |
| DevBundle5ETH | ETH | 35 |  |
| Administrative1Schiender | Schnieder | 6 |  |
| Administrative1Vinci | Vinci | 5 |  |
| Administrative1Miele | Miele | 9 |  |
| Administrative1Aegis | Aegis | 5 |  |
| Eval1Aegis | Aegis | 10 |  |
| Manager1ETF | ETF | 13 |  |
| Dev1Miele | Miele | 12 |  |
| Dev2Miele | Miele | 12 |  |
| Dev3Miele | Miele | 12 |  |
| Android |  | 300 |  |
| Server |  | 1000 |  |
| Central unit |  | 500 |  |
| Home appliance processor |  | 200 |  |
| Model components |  | 1000 | 1000 |
| Focus group and interviews costs |  |  |  |
| Promotion and marketing |  |  |  |

## Schedule

| ID | WBS | Task | Duration | Start | Finish | Predecessors | Total slack | Free slack | Constraint | Resources | Work | Cost |
| --- | --- | --- | --- | --- | --- | --- | --- | --- | --- | --- | --- | --- |
| 1 | 1 | **Market analysis** | 22d | 2018-07-02 08:00 | 2018-07-31 17:00 |  | 8.12d | 0d |  |  | 176h | 2,028 |
| 2 | 1.1 | Define the problem or opportunity | 2d | 2018-07-02 08:00 | 2018-07-03 17:00 |  | 12.12d | 0d |  | Researcher1Vinci [25%]; Researcher1ETF [25%]; Researcher1ETH [25%]; Researcher1Miele [25%] | 16h | 180 |
| 3 | 1.2 | **develop the research plan** | 3d | 2018-07-04 08:00 | 2018-07-06 17:00 | 2 | 12.12d | 0d |  |  | 24h | 240 |
| 4 | 1.2.1 | Planning for already existing products | 1d | 2018-07-04 08:00 | 2018-07-04 17:00 |  | 12.12d | 0d |  | Researcher1ETF | 8h | 80 |
| 5 | 1.2.2 | Planning for researching products from similair areas of iot | 1d | 2018-07-05 08:00 | 2018-07-05 17:00 | 4 | 12.12d | 0d |  | Researcher1ETF | 8h | 80 |
| 6 | 1.2.3 | Planning for future projects on the same topic | 1d | 2018-07-06 08:00 | 2018-07-06 17:00 | 5 | 12.12d |  |  | Researcher1ETF | 8h | 80 |
| 7 | 1.3 | **collect relevant data and information** | 15d | 2018-07-09 08:00 | 2018-07-27 17:00 | 3 | 8.12d | 0d |  |  | 120h | 1,464 |
| 8 | 1.3.1 | Collect data from scientfic articles | 2d | 2018-07-09 08:00 | 2018-07-10 17:00 |  | 12.12d | 4d |  | Researcher1Miele; Focus group and interviews costs [0.1%] | 16h | 272 |
| 9 | 1.3.2 | Collect data from focus groups | 2d | 2018-07-11 08:00 | 2018-07-12 17:00 |  | 13.12d | 5d |  | Researcher1Miele; Focus group and interviews costs [0.1%] | 16h | 272 |
| 10 | 1.3.3 | Collect data from comments on relevant sites | 2d | 2018-07-13 08:00 | 2018-07-16 17:00 |  | 8.12d | 0d | start no earlier than 2018-07-13 08:00 | Researcher1Miele | 16h | 272 |
| 11 | 1.3.4 | Organize data from scientfic articles | 3d | 2018-07-17 08:00 | 2018-07-19 17:00 | 10, 8 | 8.12d | 0d |  | Researcher1ETH | 24h | 216 |
| 12 | 1.3.5 | Organize data from focus groups | 3d | 2018-07-20 08:00 | 2018-07-24 17:00 | 11, 9 | 8.12d | 0d |  | Researcher1ETH | 24h | 216 |
| 13 | 1.3.6 | Organize data from relevant sites | 3d | 2018-07-25 08:00 | 2018-07-27 17:00 | 12, 10 | 8.12d |  |  | Researcher1ETH | 24h | 216 |
| 14 | 1.4 | analyze data and report findings | 2d | 2018-07-30 08:00 | 2018-07-31 17:00 | 7 | 8.12d |  |  | Researcher1Vinci | 16h | 144 |
| 15 | 2 | **User requirements analysis** | 43d | 2018-08-01 08:00 | 2018-09-28 17:00 | 1 | 0.12d | 0d |  |  | 344h | 4,176 |
| 16 | 2.1 | **Gather data from users** | 7d | 2018-08-01 08:00 | 2018-08-09 17:00 |  | 8.12d | 0d |  |  | 56h | 504 |
| 17 | 2.1.1 | focus groups | 2d | 2018-08-01 08:00 | 2018-08-02 17:00 |  | 8.12d | 0d |  | Researcher1Vinci; Focus group and interviews costs [0.1%] | 16h | 144 |
| 18 | 2.1.2 | individual interviews | 2d | 2018-08-03 08:00 | 2018-08-06 17:00 | 17 | 8.12d | 0d |  | Researcher1Vinci; Focus group and interviews costs [0.1%] | 16h | 144 |
| 19 | 2.1.3 | gather all data in 1 document | 3d | 2018-08-07 08:00 | 2018-08-09 17:00 | 18 | 8.12d |  |  | Researcher1Vinci; Focus group and interviews costs [0.1%] | 24h | 216 |
| 20 | 2.2 | **Detailed analysis of every functionality required** | 5d | 2018-08-10 08:00 | 2018-08-16 17:00 | 16 | 8.12d | 0d |  |  | 40h | 680 |
| 21 | 2.2.1 | divide data by functionalities | 2d | 2018-08-10 08:00 | 2018-08-13 17:00 |  | 8.12d | 0d |  | Researcher1Miele | 16h | 272 |
| 22 | 2.2.2 | individual analysis of every functionality | 3d | 2018-08-14 08:00 | 2018-08-16 17:00 | 21 | 8.12d |  |  | Researcher1Miele | 24h | 408 |
| 23 | 2.3 | Write use-cases for every functionality | 3d | 2018-08-17 08:00 | 2018-08-21 17:00 | 20 | 8.12d | 0d |  | Researcher1Vinci | 24h | 216 |
| 24 | 2.4 | Get expert opinions on the use-cases | 3d | 2018-08-22 08:00 | 2018-08-24 17:00 | 23 | 8.12d | 0d |  | Researcher1Schnieder; Focus group and interviews costs [0.1%] | 24h | 240 |

| ID | WBS | Task | Duration | Start | Finish | Predecessors | Total slack | Free slack | Constraint | Resources | Work | Cost |
| --- | --- | --- | --- | --- | --- | --- | --- | --- | --- | --- | --- | --- |
| 25 | 2.5 | **Make a prototype** | 10d | 2018-08-27 08:00 | 2018-09-07 17:00 | 24 | 8.12d | 0d |  |  | 80h | 1,360 |
| 26 | 2.5.1 | Prototype for a home appliance | 3d | 2018-08-27 08:00 | 2018-08-29 17:00 |  | 8.12d | 0d |  | Researcher1Miele | 24h | 408 |
| 27 | 2.5.2 | Prototype for the central unit | 3d | 2018-08-30 08:00 | 2018-09-03 17:00 | 26 | 8.12d | 0d |  | Researcher1Miele | 24h | 408 |
| 28 | 2.5.3 | Prototype for the android application | 3d | 2018-09-04 08:00 | 2018-09-06 17:00 | 27 | 8.12d | 0d |  | Researcher1Miele | 24h | 408 |
| 29 | 2.5.4 | Integration of prototypes | 1d | 2018-09-07 08:00 | 2018-09-07 17:00 | 28 | 8.12d |  |  | Researcher1Miele | 8h | 136 |
| 30 | 2.6 | User review | 3d | 2018-09-10 08:00 | 2018-09-12 17:00 | 25 | 8.12d | 0d |  | Researcher1Schnieder | 24h | 240 |
| 31 | 2.7 | Add alternative flows for the use-cases | 3d | 2018-09-13 08:00 | 2018-09-17 17:00 | 30 | 8.12d | 0d |  | Researcher1Vinci | 24h | 216 |
| 32 | 2.8 | **Correction spaces** | 9d | 2018-09-18 08:00 | 2018-09-28 17:00 | 31 | 0.12d |  |  |  | 72h | 720 |
| 33 | 2.8.1 | **Make corrections and check with the users** | 9d | 2018-09-18 08:00 | 2018-09-28 17:00 |  | 0.12d |  |  |  | 72h | 720 |
| 34 | 2.8.1.1 | Make corrections and check with the users 1 | 1d | 2018-09-18 08:00 | 2018-09-18 17:00 |  | 9.12d |  | start no earlier than 2018-09-18 08:00 | Researcher1Schnieder | 8h | 80 |
| 35 | 2.8.1.2 | Make corrections and check with the users 2 | 1d | 2018-09-19 08:00 | 2018-09-19 17:00 |  | 8.12d |  | start no earlier than 2018-09-19 08:00 | Researcher1Schnieder | 8h | 80 |
| 36 | 2.8.1.3 | Make corrections and check with the users 3 | 1d | 2018-09-20 08:00 | 2018-09-20 17:00 |  | 7.12d |  | start no earlier than 2018-09-20 08:00 | Researcher1Schnieder | 8h | 80 |
| 37 | 2.8.1.4 | Make corrections and check with the users 4 | 1d | 2018-09-21 08:00 | 2018-09-21 17:00 |  | 6.12d |  | start no earlier than 2018-09-21 08:00 | Researcher1Schnieder | 8h | 80 |
| 38 | 2.8.1.5 | Make corrections and check with the users 5 | 1d | 2018-09-24 08:00 | 2018-09-24 17:00 |  | 5.12d |  | start no earlier than 2018-09-24 08:00 | Researcher1Schnieder | 8h | 80 |
| 39 | 2.8.1.6 | Make corrections and check with the users 6 | 1d | 2018-09-25 08:00 | 2018-09-25 17:00 |  | 4.12d |  | start no earlier than 2018-09-25 08:00 | Researcher1Schnieder | 8h | 80 |
| 40 | 2.8.1.7 | Make corrections and check with the users 7 | 1d | 2018-09-26 08:00 | 2018-09-26 17:00 |  | 3.12d |  | start no earlier than 2018-09-26 08:00 | Researcher1Schnieder | 8h | 80 |
| 41 | 2.8.1.8 | Make corrections and check with the users 8 | 1d | 2018-09-27 08:00 | 2018-09-27 17:00 |  | 2.12d |  | start no earlier than 2018-09-27 08:00 | Researcher1Schnieder | 8h | 80 |
| 42 | 2.8.1.9 | Make corrections and check with the users 9 | 1d | 2018-09-28 08:00 | 2018-09-28 17:00 |  | 1.12d |  | start no earlier than 2018-09-28 08:00 | Researcher1Schnieder | 8h | 80 |
| 43 | 3 | **System design** | 23d | 2018-10-01 08:00 | 2018-10-31 17:00 | 15 | 0.12d | 0d |  |  | 208h | 6,696 |
| 44 | 3.1 | Design the application | 3d | 2018-10-01 08:00 | 2018-10-03 17:00 |  | 0.12d | 0d |  | ResearchBundle4Aegis | 24h | 864 |
| 45 | 3.2 | Design and integrate the network | 3d | 2018-10-04 08:00 | 2018-10-08 17:00 | 44 | 0.12d | 0d |  | ResearchBundle4ETF | 24h | 960 |
| 46 | 3.3 | Design and integrate the database | 3d | 2018-10-09 08:00 | 2018-10-11 17:00 | 45 | 0.12d | 0d |  | ResearchBundle4Aegis | 24h | 864 |
| 47 | 3.4 | **Create a contingency plan** | 6d | 2018-10-12 08:00 | 2018-10-19 17:00 | 46 | 0.12d | 0d |  |  | 48h | 1,920 |
| 48 | 3.4.1 | application | 3d | 2018-10-12 08:00 | 2018-10-16 17:00 |  | 0.12d | 0d |  | ResearchBundle4ETF | 24h | 960 |
| 49 | 3.4.2 | network | 2d | 2018-10-17 08:00 | 2018-10-18 17:00 | 48 | 0.12d | 0d |  | ResearchBundle4ETF | 16h | 640 |
| 50 | 3.4.3 | database | 1d | 2018-10-19 08:00 | 2018-10-19 17:00 | 49 | 0.12d |  |  | ResearchBundle4ETF | 8h | 320 |
| 51 | 3.5 | Review the design | 3d | 2018-10-22 08:00 | 2018-10-24 17:00 | 47 | 0.12d | 0d |  | ResearchBundle4Vinci | 24h | 864 |
| 52 | 3.6 | Articulate the business processes and procedures | 3d | 2018-10-25 08:00 | 2018-10-29 17:00 | 51 | 2.12d |  |  | ResearchBundle4Vinci | 24h | 864 |

| ID | WBS | Task | Type | Duration | Start | Finish | Predecessors | Total slack | Free slack | Resources | Work | Cost |
| --- | --- | --- | --- | --- | --- | --- | --- | --- | --- | --- | --- | --- |
| 53 | 3.7 | **UML diagrams** |  | 5d | 2018-10-25 08:00 | 2018-10-31 17:00 | 51 | 0.12d |  |  | 40h | 360 |
| 54 | 3.7.1 | class diagrams |  | 1d | 2018-10-25 08:00 | 2018-10-25 17:00 |  | 0.12d | 0d | Researcher1ETH | 8h | 72 |
| 55 | 3.7.2 | sequence diagrams |  | 3d | 2018-10-26 08:00 | 2018-10-30 17:00 | 54 | 0.12d | 0d | Researcher1ETH | 24h | 216 |
| 56 | 3.7.3 | package diagrams |  | 1d | 2018-10-31 08:00 | 2018-10-31 17:00 | 55 | 0.12d |  | Researcher1ETH | 8h | 72 |
| 57 | 4 | **Architecture modeling** |  | 43d | 2018-11-01 08:00 | 2018-12-31 17:00 | 43 | 0.12d | 0d | Model components | 324.64h | 11,605.28 |
| 58 | 4.1 | UML component diagrams |  | 10d | 2018-11-01 08:00 | 2018-11-14 17:00 |  | 0.12d | 0d | Researcher1Schnieder | 80h | 800 |
| 59 | 4.2 | Develop home appliances model |  | 8d | 2018-11-15 08:00 | 2018-11-26 17:00 | 58 | 3.12d | 3d | ResearchBundle3Vinci [33%]; Home appliance processor [300%] | 21.12h | 1,170.24 |
| 60 | 4.3 | Develop central processor model |  | 11d | 2018-11-15 08:00 | 2018-11-29 17:00 | 58 | 0.12d | 0d | ResearchBundle3Vinci [33%]; Central unit [300%] | 29.04h | 2,284.08 |
| 61 | 4.4 | rese |  | 7d | 2018-11-15 08:00 | 2018-11-23 17:00 | 58 | 4.12d | 4d | ResearchBundle3Vinci [33%]; Android [300%] | 18.48h | 1,398.96 |
| 62 | 4.5 | Connect the three models |  | 10d | 2018-11-30 08:00 | 2018-12-13 17:00 | 59, 60, 61 | 0.12d | 0d | Researcher1Miele | 80h | 1,360 |
| 63 | 4.6 | Test for problems |  | 12d | 2018-12-14 08:00 | 2018-12-31 17:00 | 62 | 0.12d |  | ResearchBundle3Vinci | 96h | 2,592 |
| 64 | 5 | Finalization of analysis | milestone | 0d | 2018-12-31 17:00 | 2018-12-31 17:00 | 57 | 652.12d |  |  |  |  |
| 65 | 6 | **Implementation** |  | 326d | 2019-01-01 08:00 | 2020-03-31 17:00 | 57 | 0.12d | 0d |  | 4208h | 37,456 |
| 66 | 6.1 | Implementation of software for home appliances |  | 100d | 2019-01-01 08:00 | 2019-05-20 17:00 |  | 72.12d | 72d | Dev1Vinci; Home appliance processor [500%] | 800h | 6,600 |
| 67 | 6.2 | Implementation of software for the central unit |  | 140d | 2019-01-01 08:00 | 2019-07-15 17:00 |  | 0.12d | 0d | Dev1ETF; Central unit [500%] | 1120h | 10,340 |
| 68 | 6.3 | Implementation of the android application |  | 100d | 2019-01-01 08:00 | 2019-05-20 17:00 |  | 40.12d | 40d | Dev1Schnieder; Android [500%] | 800h | 7,100 |
| 69 | 6.4 | Implementation of the database |  | 32d | 2019-07-16 08:00 | 2019-08-28 17:00 | 68, 67 | 0.12d | 0d | Dev2ETF; Server | 256h | 2,792 |
| 70 | 6.5 | Implementation of security measures for the system |  | 154d | 2019-08-29 08:00 | 2020-03-31 17:00 | 66, 67, 68, 69 | 0.12d |  | Dev1Aegis [50%]; Dev1ETH [50%]; Android; Central unit; Server; Home appliance processor | 1232h | 10,624 |
| 71 | 7 | Implementation over milestone | milestone | 0d | 2020-03-31 17:00 | 2020-03-31 17:00 | 65 | 326.12d |  |  |  |  |
| 72 | 8 | **Integration and installation** |  | 131d | 2020-04-01 08:00 | 2020-09-30 17:00 | 65 | 0.12d | 0d |  | 1204.72h | 16,633.04 |
| 73 | 8.1 | Integration of implemented software parts |  | 80d | 2020-04-01 08:00 | 2020-07-21 17:00 |  | 0.12d | 0d | Dev1Vinci [25%]; Dev2Vinci [25%]; Dev1Schnieder [25%]; Dev2Schnieder [25%]; Android [200%]; Central unit [200%]; Home appliance processor [200%] | 640h | 6,480 |
| 74 | 8.2 | Integration of security measures |  | 41d | 2020-07-22 08:00 | 2020-09-16 17:00 | 73 | 0.12d | 0d | Dev1Aegis [33%]; Dev2Aegis [33%]; Dev3Aegis [33%]; Home appliance processor; Server; Android; Central unit | 324.72h | 4,273.04 |
| 75 | 8.3 | Instalation on the model of home appliances |  | 10d | 2020-09-17 08:00 | 2020-09-30 17:00 | 74 | 0.12d |  | Dev3Miele; Home appliance processor [300%] | 80h | 1,560 |
| 76 | 8.4 | Instalation on the model of central unit |  | 10d | 2020-09-17 08:00 | 2020-09-30 17:00 | 74 | 0.12d |  | Dev2Miele; Central unit [300%] | 80h | 2,460 |
| 77 | 8.5 | Instalation on the android model |  | 10d | 2020-09-17 08:00 | 2020-09-30 17:00 | 74 | 0.12d |  | Dev1Miele; Android [300%] | 80h | 1,860 |
| 78 | 9 | Finalization of integration | milestone | 0d | 2020-09-30 17:00 | 2020-09-30 17:00 | 72 | 195.12d |  |  |  |  |

| ID | WBS | Task | Type | Duration | Start | Finish | Predecessors | Total slack | Free slack | Constraint | Resources | Work | Cost |
| --- | --- | --- | --- | --- | --- | --- | --- | --- | --- | --- | --- | --- | --- |
| 79 | 10 | **Testing** |  | 152d | 2020-10-01 08:00 | 2021-04-30 17:00 | 72 | 0.12d | 0d |  |  | 1600h | 72,000 |
| 80 | 10.1 | **Home appliances software testing** |  | 50d | 2020-10-01 08:00 | 2020-12-09 17:00 |  | 0.12d | 0d |  | Home appliance processor [500%] | 224h | 8,840 |
| 81 | 10.1.1 | Command recognition |  | 50d | 2020-10-01 08:00 | 2020-12-09 17:00 |  | 0.12d |  |  | DevBundle5ETF [14%]; DevBundle5ETH [14%] | 112h | 3,920 |
| 82 | 10.1.2 | Data sending |  | 50d | 2020-10-01 08:00 | 2020-12-09 17:00 |  | 0.12d |  |  | DevBundle5ETF [14%]; DevBundle5ETH [14%] | 112h | 3,920 |
| 83 | 10.2 | **Central unit software testing** |  | 50d | 2020-10-01 08:00 | 2020-12-09 17:00 |  | 0.12d | 0d |  | Central unit [500%] | 336h | 14,260 |
| 84 | 10.2.1 | Estimation of state inside the home |  | 50d | 2020-10-01 08:00 | 2020-12-09 17:00 |  | 0.12d |  |  | DevBundle5ETF [14%]; DevBundle5ETH [14%] | 112h | 3,920 |
| 85 | 10.2.2 | Control of other appliance |  | 50d | 2020-10-01 08:00 | 2020-12-09 17:00 |  | 0.12d |  |  | DevBundle5ETF [14%]; DevBundle5ETH [14%] | 112h | 3,920 |
| 86 | 10.2.3 | Correct data sending and receiving |  | 50d | 2020-10-01 08:00 | 2020-12-09 17:00 |  | 0.12d |  |  | DevBundle5ETF [14%]; DevBundle5ETH [14%] | 112h | 3,920 |
| 87 | 10.3 | **Android software testing** |  | 50d | 2020-10-01 08:00 | 2020-12-09 17:00 |  | 0.12d | 0d |  | Android [500%] | 224h | 9,340 |
| 88 | 10.3.1 | Correct data receiving |  | 50d | 2020-10-01 08:00 | 2020-12-09 17:00 |  | 0.12d |  |  | DevBundle5ETF [14%]; DevBundle5ETH [14%] | 112h | 3,920 |
| 89 | 10.3.2 | Choosing regimen of work inside the house |  | 50d | 2020-10-01 08:00 | 2020-12-09 17:00 |  | 0.12d |  |  | DevBundle5ETF [14%]; DevBundle5ETH [14%] | 112h | 3,920 |
| 90 | 10.4 | Network connection testing |  | 20d | 2020-12-10 08:00 | 2021-01-06 17:00 | 80, 83, 87 | 0.12d | 0d |  | DevBundle5ETF [50%]; DevBundle5ETH [50%]; Server; Central unit [500%]; Android [500%] | 160h | 10,600 |
| 91 | 10.5 | Security testing |  | 82d | 2021-01-07 08:00 | 2021-04-30 17:00 | 90 | 0.12d |  |  | DevBundle5ETF [50%]; DevBundle5ETH [50%]; Server; Android [500%]; Central unit [500%]; Home appliance processor [500%] | 656h | 28,960 |
| 92 | 11 | Finished testing | milestone | 0d | 2021-04-30 17:00 | 2021-04-30 17:00 | 79 | 43.12d |  |  |  |  |  |
| 93 | 12 | Promotion and marketing |  | 195d | 2020-10-01 08:00 | 2021-06-30 17:00 | 72 | 0.12d | 0d |  | Administrative1Aegis; Administrative1Miele; Administrative1Schiender; Administrative1Vinci; Promotion and marketing [0.1%] | 6240h | 39,000 |
| 94 | 13 | End of marketing | milestone | 0d | 2021-06-30 17:00 | 2021-06-30 17:00 | 93 | 0.12d |  |  |  |  |  |
| 95 | 14 | Evaluation and dissimination |  | 43d | 2021-05-03 08:00 | 2021-06-30 17:00 | 79 | 0.12d |  |  | Eval1Aegis; Server; Home appliance processor; Central unit; Android; Focus group and interviews costs [0.1%] | 344h | 5,440 |
| 96 | 15 | **Project management** |  | 783.12d | 2018-07-02 08:00 | 2021-07-01 09:00 |  | 0d |  |  |  | 193h | 2,509 |
| 97 | 15.1 | **Weekly meeting** |  | 780.12d | 2018-07-02 08:00 | 2021-06-28 09:00 |  | 0d |  |  |  | 157h | 2,041 |
| 98 | 15.1.1 | 1 |  | 1h | 2018-07-02 08:00 | 2018-07-02 09:00 |  | 780d |  | start no earlier than 2018-07-02 08:00 | Manager1ETF | 1h | 13 |
| 99 | 15.1.2 | 2 |  | 1h | 2018-07-09 08:00 | 2018-07-09 09:00 |  | 775d |  | start no earlier than 2018-07-09 08:00 | Manager1ETF | 1h | 13 |
| 100 | 15.1.3 | 3 |  | 1h | 2018-07-16 08:00 | 2018-07-16 09:00 |  | 770d |  | start no earlier than 2018-07-16 08:00 | Manager1ETF | 1h | 13 |
| 101 | 15.1.4 | 4 |  | 1h | 2018-07-23 08:00 | 2018-07-23 09:00 |  | 765d |  | start no earlier than 2018-07-23 08:00 | Manager1ETF | 1h | 13 |
| 102 | 15.1.5 | 5 |  | 1h | 2018-07-30 08:00 | 2018-07-30 09:00 |  | 760d |  | start no earlier than 2018-07-30 08:00 | Manager1ETF | 1h | 13 |
| 103 | 15.1.6 | 6 |  | 1h | 2018-08-06 08:00 | 2018-08-06 09:00 |  | 755d |  | start no earlier than 2018-08-06 08:00 | Manager1ETF | 1h | 13 |
| 104 | 15.1.7 | 7 |  | 1h | 2018-08-13 08:00 | 2018-08-13 09:00 |  | 750d |  | start no earlier than 2018-08-13 08:00 | Manager1ETF | 1h | 13 |
| 105 | 15.1.8 | 8 |  | 1h | 2018-08-20 08:00 | 2018-08-20 09:00 |  | 745d |  | start no earlier than 2018-08-20 08:00 | Manager1ETF | 1h | 13 |
| 106 | 15.1.9 | 9 |  | 1h | 2018-08-27 08:00 | 2018-08-27 09:00 |  | 740d |  | start no earlier than 2018-08-27 08:00 | Manager1ETF | 1h | 13 |
| 107 | 15.1.10 | 10 |  | 1h | 2018-09-03 08:00 | 2018-09-03 09:00 |  | 735d |  | start no earlier than 2018-09-03 08:00 | Manager1ETF | 1h | 13 |
| 108 | 15.1.11 | 11 |  | 1h | 2018-09-10 08:00 | 2018-09-10 09:00 |  | 730d |  | start no earlier than 2018-09-10 08:00 | Manager1ETF | 1h | 13 |
| 109 | 15.1.12 | 12 |  | 1h | 2018-09-17 08:00 | 2018-09-17 09:00 |  | 725d |  | start no earlier than 2018-09-17 08:00 | Manager1ETF | 1h | 13 |
| 110 | 15.1.13 | 13 |  | 1h | 2018-09-24 08:00 | 2018-09-24 09:00 |  | 720d |  | start no earlier than 2018-09-24 08:00 | Manager1ETF | 1h | 13 |
| 111 | 15.1.14 | 14 |  | 1h | 2018-10-01 08:00 | 2018-10-01 09:00 |  | 715d |  | start no earlier than 2018-10-01 08:00 | Manager1ETF | 1h | 13 |
| 112 | 15.1.15 | 15 |  | 1h | 2018-10-08 08:00 | 2018-10-08 09:00 |  | 710d |  | start no earlier than 2018-10-08 08:00 | Manager1ETF | 1h | 13 |
| 113 | 15.1.16 | 16 |  | 1h | 2018-10-15 08:00 | 2018-10-15 09:00 |  | 705d |  | start no earlier than 2018-10-15 08:00 | Manager1ETF | 1h | 13 |
| 114 | 15.1.17 | 17 |  | 1h | 2018-10-22 08:00 | 2018-10-22 09:00 |  | 700d |  | start no earlier than 2018-10-22 08:00 | Manager1ETF | 1h | 13 |
| 115 | 15.1.18 | 18 |  | 1h | 2018-10-29 08:00 | 2018-10-29 09:00 |  | 695d |  | start no earlier than 2018-10-29 08:00 | Manager1ETF | 1h | 13 |
| 116 | 15.1.19 | 19 |  | 1h | 2018-11-05 08:00 | 2018-11-05 09:00 |  | 690d |  | start no earlier than 2018-11-05 08:00 | Manager1ETF | 1h | 13 |
| 117 | 15.1.20 | 20 |  | 1h | 2018-11-12 08:00 | 2018-11-12 09:00 |  | 685d |  | start no earlier than 2018-11-12 08:00 | Manager1ETF | 1h | 13 |
| 118 | 15.1.21 | 21 |  | 1h | 2018-11-19 08:00 | 2018-11-19 09:00 |  | 680d |  | start no earlier than 2018-11-19 08:00 | Manager1ETF | 1h | 13 |
| 119 | 15.1.22 | 22 |  | 1h | 2018-11-26 08:00 | 2018-11-26 09:00 |  | 675d |  | start no earlier than 2018-11-26 08:00 | Manager1ETF | 1h | 13 |
| 120 | 15.1.23 | 23 |  | 1h | 2018-12-03 08:00 | 2018-12-03 09:00 |  | 670d |  | start no earlier than 2018-12-03 08:00 | Manager1ETF | 1h | 13 |
| 121 | 15.1.24 | 24 |  | 1h | 2018-12-10 08:00 | 2018-12-10 09:00 |  | 665d |  | start no earlier than 2018-12-10 08:00 | Manager1ETF | 1h | 13 |
| 122 | 15.1.25 | 25 |  | 1h | 2018-12-17 08:00 | 2018-12-17 09:00 |  | 660d |  | start no earlier than 2018-12-17 08:00 | Manager1ETF | 1h | 13 |
| 123 | 15.1.26 | 26 |  | 1h | 2018-12-24 08:00 | 2018-12-24 09:00 |  | 655d |  | start no earlier than 2018-12-24 08:00 | Manager1ETF | 1h | 13 |
| 124 | 15.1.27 | 27 |  | 1h | 2018-12-31 08:00 | 2018-12-31 09:00 |  | 650d |  | start no earlier than 2018-12-31 08:00 | Manager1ETF | 1h | 13 |
| 125 | 15.1.28 | 28 |  | 1h | 2019-01-07 08:00 | 2019-01-07 09:00 |  | 645d |  | start no earlier than 2019-01-07 08:00 | Manager1ETF | 1h | 13 |
| 126 | 15.1.29 | 29 |  | 1h | 2019-01-14 08:00 | 2019-01-14 09:00 |  | 640d |  | start no earlier than 2019-01-14 08:00 | Manager1ETF | 1h | 13 |
| 127 | 15.1.30 | 30 |  | 1h | 2019-01-21 08:00 | 2019-01-21 09:00 |  | 635d |  | start no earlier than 2019-01-21 08:00 | Manager1ETF | 1h | 13 |
| 128 | 15.1.31 | 31 |  | 1h | 2019-01-28 08:00 | 2019-01-28 09:00 |  | 630d |  | start no earlier than 2019-01-28 08:00 | Manager1ETF | 1h | 13 |
| 129 | 15.1.32 | 32 |  | 1h | 2019-02-04 08:00 | 2019-02-04 09:00 |  | 625d |  | start no earlier than 2019-02-04 08:00 | Manager1ETF | 1h | 13 |
| 130 | 15.1.33 | 33 |  | 1h | 2019-02-11 08:00 | 2019-02-11 09:00 |  | 620d |  | start no earlier than 2019-02-11 08:00 | Manager1ETF | 1h | 13 |
| 131 | 15.1.34 | 34 |  | 1h | 2019-02-18 08:00 | 2019-02-18 09:00 |  | 615d |  | start no earlier than 2019-02-18 08:00 | Manager1ETF | 1h | 13 |
| 132 | 15.1.35 | 35 |  | 1h | 2019-02-25 08:00 | 2019-02-25 09:00 |  | 610d |  | start no earlier than 2019-02-25 08:00 | Manager1ETF | 1h | 13 |
| 133 | 15.1.36 | 36 |  | 1h | 2019-03-04 08:00 | 2019-03-04 09:00 |  | 605d |  | start no earlier than 2019-03-04 08:00 | Manager1ETF | 1h | 13 |
| 134 | 15.1.37 | 37 |  | 1h | 2019-03-11 08:00 | 2019-03-11 09:00 |  | 600d |  | start no earlier than 2019-03-11 08:00 | Manager1ETF | 1h | 13 |
| 135 | 15.1.38 | 38 |  | 1h | 2019-03-18 08:00 | 2019-03-18 09:00 |  | 595d |  | start no earlier than 2019-03-18 08:00 | Manager1ETF | 1h | 13 |
| 136 | 15.1.39 | 39 |  | 1h | 2019-03-25 08:00 | 2019-03-25 09:00 |  | 590d |  | start no earlier than 2019-03-25 08:00 | Manager1ETF | 1h | 13 |
| 137 | 15.1.40 | 40 |  | 1h | 2019-04-01 08:00 | 2019-04-01 09:00 |  | 585d |  | start no earlier than 2019-04-01 08:00 | Manager1ETF | 1h | 13 |
| 138 | 15.1.41 | 41 |  | 1h | 2019-04-08 08:00 | 2019-04-08 09:00 |  | 580d |  | start no earlier than 2019-04-08 08:00 | Manager1ETF | 1h | 13 |
| 139 | 15.1.42 | 42 |  | 1h | 2019-04-15 08:00 | 2019-04-15 09:00 |  | 575d |  | start no earlier than 2019-04-15 08:00 | Manager1ETF | 1h | 13 |
| 140 | 15.1.43 | 43 |  | 1h | 2019-04-22 08:00 | 2019-04-22 09:00 |  | 570d |  | start no earlier than 2019-04-22 08:00 | Manager1ETF | 1h | 13 |
| 141 | 15.1.44 | 44 |  | 1h | 2019-04-29 08:00 | 2019-04-29 09:00 |  | 565d |  | start no earlier than 2019-04-29 08:00 | Manager1ETF | 1h | 13 |
| 142 | 15.1.45 | 45 |  | 1h | 2019-05-06 08:00 | 2019-05-06 09:00 |  | 560d |  | start no earlier than 2019-05-06 08:00 | Manager1ETF | 1h | 13 |
| 143 | 15.1.46 | 46 |  | 1h | 2019-05-13 08:00 | 2019-05-13 09:00 |  | 555d |  | start no earlier than 2019-05-13 08:00 | Manager1ETF | 1h | 13 |
| 144 | 15.1.47 | 47 |  | 1h | 2019-05-20 08:00 | 2019-05-20 09:00 |  | 550d |  | start no earlier than 2019-05-20 08:00 | Manager1ETF | 1h | 13 |
| 145 | 15.1.48 | 48 |  | 1h | 2019-05-27 08:00 | 2019-05-27 09:00 |  | 545d |  | start no earlier than 2019-05-27 08:00 | Manager1ETF | 1h | 13 |
| 146 | 15.1.49 | 49 |  | 1h | 2019-06-03 08:00 | 2019-06-03 09:00 |  | 540d |  | start no earlier than 2019-06-03 08:00 | Manager1ETF | 1h | 13 |
| 147 | 15.1.50 | 50 |  | 1h | 2019-06-10 08:00 | 2019-06-10 09:00 |  | 535d |  | start no earlier than 2019-06-10 08:00 | Manager1ETF | 1h | 13 |
| 148 | 15.1.51 | 51 |  | 1h | 2019-06-17 08:00 | 2019-06-17 09:00 |  | 530d |  | start no earlier than 2019-06-17 08:00 | Manager1ETF | 1h | 13 |

| ID | WBS | Task | Duration | Start | Finish | Total slack | Constraint | Resources | Work | Cost |
| --- | --- | --- | --- | --- | --- | --- | --- | --- | --- | --- |
| 149 | 15.1.52 | 52 | 1h | 2019-06-24 08:00 | 2019-06-24 09:00 | 525d | start no earlier than 2019-06-24 08:00 | Manager1ETF | 1h | 13 |
| 150 | 15.1.53 | 53 | 1h | 2019-07-01 08:00 | 2019-07-01 09:00 | 520d | start no earlier than 2019-07-01 08:00 | Manager1ETF | 1h | 13 |
| 151 | 15.1.54 | 54 | 1h | 2019-07-08 08:00 | 2019-07-08 09:00 | 515d | start no earlier than 2019-07-08 08:00 | Manager1ETF | 1h | 13 |
| 152 | 15.1.55 | 55 | 1h | 2019-07-15 08:00 | 2019-07-15 09:00 | 510d | start no earlier than 2019-07-15 08:00 | Manager1ETF | 1h | 13 |
| 153 | 15.1.56 | 56 | 1h | 2019-07-22 08:00 | 2019-07-22 09:00 | 505d | start no earlier than 2019-07-22 08:00 | Manager1ETF | 1h | 13 |
| 154 | 15.1.57 | 57 | 1h | 2019-07-29 08:00 | 2019-07-29 09:00 | 500d | start no earlier than 2019-07-29 08:00 | Manager1ETF | 1h | 13 |
| 155 | 15.1.58 | 58 | 1h | 2019-08-05 08:00 | 2019-08-05 09:00 | 495d | start no earlier than 2019-08-05 08:00 | Manager1ETF | 1h | 13 |
| 156 | 15.1.59 | 59 | 1h | 2019-08-12 08:00 | 2019-08-12 09:00 | 490d | start no earlier than 2019-08-12 08:00 | Manager1ETF | 1h | 13 |
| 157 | 15.1.60 | 60 | 1h | 2019-08-19 08:00 | 2019-08-19 09:00 | 485d | start no earlier than 2019-08-19 08:00 | Manager1ETF | 1h | 13 |
| 158 | 15.1.61 | 61 | 1h | 2019-08-26 08:00 | 2019-08-26 09:00 | 480d | start no earlier than 2019-08-26 08:00 | Manager1ETF | 1h | 13 |
| 159 | 15.1.62 | 62 | 1h | 2019-09-02 08:00 | 2019-09-02 09:00 | 475d | start no earlier than 2019-09-02 08:00 | Manager1ETF | 1h | 13 |
| 160 | 15.1.63 | 63 | 1h | 2019-09-09 08:00 | 2019-09-09 09:00 | 470d | start no earlier than 2019-09-09 08:00 | Manager1ETF | 1h | 13 |
| 161 | 15.1.64 | 64 | 1h | 2019-09-16 08:00 | 2019-09-16 09:00 | 465d | start no earlier than 2019-09-16 08:00 | Manager1ETF | 1h | 13 |
| 162 | 15.1.65 | 65 | 1h | 2019-09-23 08:00 | 2019-09-23 09:00 | 460d | start no earlier than 2019-09-23 08:00 | Manager1ETF | 1h | 13 |
| 163 | 15.1.66 | 66 | 1h | 2019-09-30 08:00 | 2019-09-30 09:00 | 455d | start no earlier than 2019-09-30 08:00 | Manager1ETF | 1h | 13 |
| 164 | 15.1.67 | 67 | 1h | 2019-10-07 08:00 | 2019-10-07 09:00 | 450d | start no earlier than 2019-10-07 08:00 | Manager1ETF | 1h | 13 |
| 165 | 15.1.68 | 68 | 1h | 2019-10-14 08:00 | 2019-10-14 09:00 | 445d | start no earlier than 2019-10-14 08:00 | Manager1ETF | 1h | 13 |
| 166 | 15.1.69 | 69 | 1h | 2019-10-21 08:00 | 2019-10-21 09:00 | 440d | start no earlier than 2019-10-21 08:00 | Manager1ETF | 1h | 13 |
| 167 | 15.1.70 | 70 | 1h | 2019-10-28 08:00 | 2019-10-28 09:00 | 435d | start no earlier than 2019-10-28 08:00 | Manager1ETF | 1h | 13 |
| 168 | 15.1.71 | 71 | 1h | 2019-11-04 08:00 | 2019-11-04 09:00 | 430d | start no earlier than 2019-11-04 08:00 | Manager1ETF | 1h | 13 |
| 169 | 15.1.72 | 72 | 1h | 2019-11-11 08:00 | 2019-11-11 09:00 | 425d | start no earlier than 2019-11-11 08:00 | Manager1ETF | 1h | 13 |
| 170 | 15.1.73 | 73 | 1h | 2019-11-18 08:00 | 2019-11-18 09:00 | 420d | start no earlier than 2019-11-18 08:00 | Manager1ETF | 1h | 13 |
| 171 | 15.1.74 | 74 | 1h | 2019-11-25 08:00 | 2019-11-25 09:00 | 415d | start no earlier than 2019-11-25 08:00 | Manager1ETF | 1h | 13 |
| 172 | 15.1.75 | 75 | 1h | 2019-12-02 08:00 | 2019-12-02 09:00 | 410d | start no earlier than 2019-12-02 08:00 | Manager1ETF | 1h | 13 |
| 173 | 15.1.76 | 76 | 1h | 2019-12-09 08:00 | 2019-12-09 09:00 | 405d | start no earlier than 2019-12-09 08:00 | Manager1ETF | 1h | 13 |
| 174 | 15.1.77 | 77 | 1h | 2019-12-16 08:00 | 2019-12-16 09:00 | 400d | start no earlier than 2019-12-16 08:00 | Manager1ETF | 1h | 13 |
| 175 | 15.1.78 | 78 | 1h | 2019-12-23 08:00 | 2019-12-23 09:00 | 395d | start no earlier than 2019-12-23 08:00 | Manager1ETF | 1h | 13 |
| 176 | 15.1.79 | 79 | 1h | 2019-12-30 08:00 | 2019-12-30 09:00 | 390d | start no earlier than 2019-12-30 08:00 | Manager1ETF | 1h | 13 |
| 177 | 15.1.80 | 80 | 1h | 2020-01-06 08:00 | 2020-01-06 09:00 | 385d | start no earlier than 2020-01-06 08:00 | Manager1ETF | 1h | 13 |
| 178 | 15.1.81 | 81 | 1h | 2020-01-13 08:00 | 2020-01-13 09:00 | 380d | start no earlier than 2020-01-13 08:00 | Manager1ETF | 1h | 13 |
| 179 | 15.1.82 | 82 | 1h | 2020-01-20 08:00 | 2020-01-20 09:00 | 375d | start no earlier than 2020-01-20 08:00 | Manager1ETF | 1h | 13 |
| 180 | 15.1.83 | 83 | 1h | 2020-01-27 08:00 | 2020-01-27 09:00 | 370d | start no earlier than 2020-01-27 08:00 | Manager1ETF | 1h | 13 |
| 181 | 15.1.84 | 84 | 1h | 2020-02-03 08:00 | 2020-02-03 09:00 | 365d | start no earlier than 2020-02-03 08:00 | Manager1ETF | 1h | 13 |
| 182 | 15.1.85 | 85 | 1h | 2020-02-10 08:00 | 2020-02-10 09:00 | 360d | start no earlier than 2020-02-10 08:00 | Manager1ETF | 1h | 13 |
| 183 | 15.1.86 | 86 | 1h | 2020-02-17 08:00 | 2020-02-17 09:00 | 355d | start no earlier than 2020-02-17 08:00 | Manager1ETF | 1h | 13 |
| 184 | 15.1.87 | 87 | 1h | 2020-02-24 08:00 | 2020-02-24 09:00 | 350d | start no earlier than 2020-02-24 08:00 | Manager1ETF | 1h | 13 |
| 185 | 15.1.88 | 88 | 1h | 2020-03-02 08:00 | 2020-03-02 09:00 | 345d | start no earlier than 2020-03-02 08:00 | Manager1ETF | 1h | 13 |
| 186 | 15.1.89 | 89 | 1h | 2020-03-09 08:00 | 2020-03-09 09:00 | 340d | start no earlier than 2020-03-09 08:00 | Manager1ETF | 1h | 13 |
| 187 | 15.1.90 | 90 | 1h | 2020-03-16 08:00 | 2020-03-16 09:00 | 335d | start no earlier than 2020-03-16 08:00 | Manager1ETF | 1h | 13 |
| 188 | 15.1.91 | 91 | 1h | 2020-03-23 08:00 | 2020-03-23 09:00 | 330d | start no earlier than 2020-03-23 08:00 | Manager1ETF | 1h | 13 |
| 189 | 15.1.92 | 92 | 1h | 2020-03-30 08:00 | 2020-03-30 09:00 | 325d | start no earlier than 2020-03-30 08:00 | Manager1ETF | 1h | 13 |
| 190 | 15.1.93 | 93 | 1h | 2020-04-06 08:00 | 2020-04-06 09:00 | 320d | start no earlier than 2020-04-06 08:00 | Manager1ETF | 1h | 13 |
| 191 | 15.1.94 | 94 | 1h | 2020-04-13 08:00 | 2020-04-13 09:00 | 315d | start no earlier than 2020-04-13 08:00 | Manager1ETF | 1h | 13 |
| 192 | 15.1.95 | 95 | 1h | 2020-04-20 08:00 | 2020-04-20 09:00 | 310d | start no earlier than 2020-04-20 08:00 | Manager1ETF | 1h | 13 |
| 193 | 15.1.96 | 96 | 1h | 2020-04-27 08:00 | 2020-04-27 09:00 | 305d | start no earlier than 2020-04-27 08:00 | Manager1ETF | 1h | 13 |
| 194 | 15.1.97 | 97 | 1h | 2020-05-04 08:00 | 2020-05-04 09:00 | 300d | start no earlier than 2020-05-04 08:00 | Manager1ETF | 1h | 13 |
| 195 | 15.1.98 | 98 | 1h | 2020-05-11 08:00 | 2020-05-11 09:00 | 295d | start no earlier than 2020-05-11 08:00 | Manager1ETF | 1h | 13 |
| 196 | 15.1.99 | 99 | 1h | 2020-05-18 08:00 | 2020-05-18 09:00 | 290d | start no earlier than 2020-05-18 08:00 | Manager1ETF | 1h | 13 |
| 197 | 15.1.100 | 100 | 1h | 2020-05-25 08:00 | 2020-05-25 09:00 | 285d | start no earlier than 2020-05-25 08:00 | Manager1ETF | 1h | 13 |
| 198 | 15.1.101 | 101 | 1h | 2020-06-01 08:00 | 2020-06-01 09:00 | 280d | start no earlier than 2020-06-01 08:00 | Manager1ETF | 1h | 13 |
| 199 | 15.1.102 | 102 | 1h | 2020-06-08 08:00 | 2020-06-08 09:00 | 275d | start no earlier than 2020-06-08 08:00 | Manager1ETF | 1h | 13 |
| 200 | 15.1.103 | 103 | 1h | 2020-06-15 08:00 | 2020-06-15 09:00 | 270d | start no earlier than 2020-06-15 08:00 | Manager1ETF | 1h | 13 |
| 201 | 15.1.104 | 104 | 1h | 2020-06-22 08:00 | 2020-06-22 09:00 | 265d | start no earlier than 2020-06-22 08:00 | Manager1ETF | 1h | 13 |
| 202 | 15.1.105 | 105 | 1h | 2020-06-29 08:00 | 2020-06-29 09:00 | 260d | start no earlier than 2020-06-29 08:00 | Manager1ETF | 1h | 13 |
| 203 | 15.1.106 | 106 | 1h | 2020-07-06 08:00 | 2020-07-06 09:00 | 255d | start no earlier than 2020-07-06 08:00 | Manager1ETF | 1h | 13 |
| 204 | 15.1.107 | 107 | 1h | 2020-07-13 08:00 | 2020-07-13 09:00 | 250d | start no earlier than 2020-07-13 08:00 | Manager1ETF | 1h | 13 |
| 205 | 15.1.108 | 108 | 1h | 2020-07-20 08:00 | 2020-07-20 09:00 | 245d | start no earlier than 2020-07-20 08:00 | Manager1ETF | 1h | 13 |
| 206 | 15.1.109 | 109 | 1h | 2020-07-27 08:00 | 2020-07-27 09:00 | 240d | start no earlier than 2020-07-27 08:00 | Manager1ETF | 1h | 13 |
| 207 | 15.1.110 | 110 | 1h | 2020-08-03 08:00 | 2020-08-03 09:00 | 235d | start no earlier than 2020-08-03 08:00 | Manager1ETF | 1h | 13 |
| 208 | 15.1.111 | 111 | 1h | 2020-08-10 08:00 | 2020-08-10 09:00 | 230d | start no earlier than 2020-08-10 08:00 | Manager1ETF | 1h | 13 |
| 209 | 15.1.112 | 112 | 1h | 2020-08-17 08:00 | 2020-08-17 09:00 | 225d | start no earlier than 2020-08-17 08:00 | Manager1ETF | 1h | 13 |
| 210 | 15.1.113 | 113 | 1h | 2020-08-24 08:00 | 2020-08-24 09:00 | 220d | start no earlier than 2020-08-24 08:00 | Manager1ETF | 1h | 13 |
| 211 | 15.1.114 | 114 | 1h | 2020-08-31 08:00 | 2020-08-31 09:00 | 215d | start no earlier than 2020-08-31 08:00 | Manager1ETF | 1h | 13 |
| 212 | 15.1.115 | 115 | 1h | 2020-09-07 08:00 | 2020-09-07 09:00 | 210d | start no earlier than 2020-09-07 08:00 | Manager1ETF | 1h | 13 |
| 213 | 15.1.116 | 116 | 1h | 2020-09-14 08:00 | 2020-09-14 09:00 | 205d | start no earlier than 2020-09-14 08:00 | Manager1ETF | 1h | 13 |
| 214 | 15.1.117 | 117 | 1h | 2020-09-21 08:00 | 2020-09-21 09:00 | 200d | start no earlier than 2020-09-21 08:00 | Manager1ETF | 1h | 13 |
| 215 | 15.1.118 | 118 | 1h | 2020-09-28 08:00 | 2020-09-28 09:00 | 195d | start no earlier than 2020-09-28 08:00 | Manager1ETF | 1h | 13 |
| 216 | 15.1.119 | 119 | 1h | 2020-10-05 08:00 | 2020-10-05 09:00 | 190d | start no earlier than 2020-10-05 08:00 | Manager1ETF | 1h | 13 |
| 217 | 15.1.120 | 120 | 1h | 2020-10-12 08:00 | 2020-10-12 09:00 | 185d | start no earlier than 2020-10-12 08:00 | Manager1ETF | 1h | 13 |
| 218 | 15.1.121 | 121 | 1h | 2020-10-19 08:00 | 2020-10-19 09:00 | 180d | start no earlier than 2020-10-19 08:00 | Manager1ETF | 1h | 13 |

| ID | WBS | Task | Duration | Start | Finish | Total slack | Constraint | Resources | Work | Cost |
| --- | --- | --- | --- | --- | --- | --- | --- | --- | --- | --- |
| 219 | 15.1.122 | 122 | 1h | 2020-10-26 08:00 | 2020-10-26 09:00 | 175d | start no earlier than 2020-10-26 08:00 | Manager1ETF | 1h | 13 |
| 220 | 15.1.123 | 123 | 1h | 2020-11-02 08:00 | 2020-11-02 09:00 | 170d | start no earlier than 2020-11-02 08:00 | Manager1ETF | 1h | 13 |
| 221 | 15.1.124 | 124 | 1h | 2020-11-09 08:00 | 2020-11-09 09:00 | 165d | start no earlier than 2020-11-09 08:00 | Manager1ETF | 1h | 13 |
| 222 | 15.1.125 | 125 | 1h | 2020-11-16 08:00 | 2020-11-16 09:00 | 160d | start no earlier than 2020-11-16 08:00 | Manager1ETF | 1h | 13 |
| 223 | 15.1.126 | 126 | 1h | 2020-11-23 08:00 | 2020-11-23 09:00 | 155d | start no earlier than 2020-11-23 08:00 | Manager1ETF | 1h | 13 |
| 224 | 15.1.127 | 127 | 1h | 2020-11-30 08:00 | 2020-11-30 09:00 | 150d | start no earlier than 2020-11-30 08:00 | Manager1ETF | 1h | 13 |
| 225 | 15.1.128 | 128 | 1h | 2020-12-07 08:00 | 2020-12-07 09:00 | 145d | start no earlier than 2020-12-07 08:00 | Manager1ETF | 1h | 13 |
| 226 | 15.1.129 | 129 | 1h | 2020-12-14 08:00 | 2020-12-14 09:00 | 140d | start no earlier than 2020-12-14 08:00 | Manager1ETF | 1h | 13 |
| 227 | 15.1.130 | 130 | 1h | 2020-12-21 08:00 | 2020-12-21 09:00 | 135d | start no earlier than 2020-12-21 08:00 | Manager1ETF | 1h | 13 |
| 228 | 15.1.131 | 131 | 1h | 2020-12-28 08:00 | 2020-12-28 09:00 | 130d | start no earlier than 2020-12-28 08:00 | Manager1ETF | 1h | 13 |
| 229 | 15.1.132 | 132 | 1h | 2021-01-04 08:00 | 2021-01-04 09:00 | 125d | start no earlier than 2021-01-04 08:00 | Manager1ETF | 1h | 13 |
| 230 | 15.1.133 | 133 | 1h | 2021-01-11 08:00 | 2021-01-11 09:00 | 120d | start no earlier than 2021-01-11 08:00 | Manager1ETF | 1h | 13 |
| 231 | 15.1.134 | 134 | 1h | 2021-01-18 08:00 | 2021-01-18 09:00 | 115d | start no earlier than 2021-01-18 08:00 | Manager1ETF | 1h | 13 |
| 232 | 15.1.135 | 135 | 1h | 2021-01-25 08:00 | 2021-01-25 09:00 | 110d | start no earlier than 2021-01-25 08:00 | Manager1ETF | 1h | 13 |
| 233 | 15.1.136 | 136 | 1h | 2021-02-01 08:00 | 2021-02-01 09:00 | 105d | start no earlier than 2021-02-01 08:00 | Manager1ETF | 1h | 13 |
| 234 | 15.1.137 | 137 | 1h | 2021-02-08 08:00 | 2021-02-08 09:00 | 100d | start no earlier than 2021-02-08 08:00 | Manager1ETF | 1h | 13 |
| 235 | 15.1.138 | 138 | 1h | 2021-02-15 08:00 | 2021-02-15 09:00 | 95d | start no earlier than 2021-02-15 08:00 | Manager1ETF | 1h | 13 |
| 236 | 15.1.139 | 139 | 1h | 2021-02-22 08:00 | 2021-02-22 09:00 | 90d | start no earlier than 2021-02-22 08:00 | Manager1ETF | 1h | 13 |
| 237 | 15.1.140 | 140 | 1h | 2021-03-01 08:00 | 2021-03-01 09:00 | 85d | start no earlier than 2021-03-01 08:00 | Manager1ETF | 1h | 13 |
| 238 | 15.1.141 | 141 | 1h | 2021-03-08 08:00 | 2021-03-08 09:00 | 80d | start no earlier than 2021-03-08 08:00 | Manager1ETF | 1h | 13 |
| 239 | 15.1.142 | 142 | 1h | 2021-03-15 08:00 | 2021-03-15 09:00 | 75d | start no earlier than 2021-03-15 08:00 | Manager1ETF | 1h | 13 |
| 240 | 15.1.143 | 143 | 1h | 2021-03-22 08:00 | 2021-03-22 09:00 | 70d | start no earlier than 2021-03-22 08:00 | Manager1ETF | 1h | 13 |
| 241 | 15.1.144 | 144 | 1h | 2021-03-29 08:00 | 2021-03-29 09:00 | 65d | start no earlier than 2021-03-29 08:00 | Manager1ETF | 1h | 13 |
| 242 | 15.1.145 | 145 | 1h | 2021-04-05 08:00 | 2021-04-05 09:00 | 60d | start no earlier than 2021-04-05 08:00 | Manager1ETF | 1h | 13 |
| 243 | 15.1.146 | 146 | 1h | 2021-04-12 08:00 | 2021-04-12 09:00 | 55d | start no earlier than 2021-04-12 08:00 | Manager1ETF | 1h | 13 |
| 244 | 15.1.147 | 147 | 1h | 2021-04-19 08:00 | 2021-04-19 09:00 | 50d | start no earlier than 2021-04-19 08:00 | Manager1ETF | 1h | 13 |
| 245 | 15.1.148 | 148 | 1h | 2021-04-26 08:00 | 2021-04-26 09:00 | 45d | start no earlier than 2021-04-26 08:00 | Manager1ETF | 1h | 13 |
| 246 | 15.1.149 | 149 | 1h | 2021-05-03 08:00 | 2021-05-03 09:00 | 40d | start no earlier than 2021-05-03 08:00 | Manager1ETF | 1h | 13 |
| 247 | 15.1.150 | 150 | 1h | 2021-05-10 08:00 | 2021-05-10 09:00 | 35d | start no earlier than 2021-05-10 08:00 | Manager1ETF | 1h | 13 |
| 248 | 15.1.151 | 151 | 1h | 2021-05-17 08:00 | 2021-05-17 09:00 | 30d | start no earlier than 2021-05-17 08:00 | Manager1ETF | 1h | 13 |
| 249 | 15.1.152 | 152 | 1h | 2021-05-24 08:00 | 2021-05-24 09:00 | 25d | start no earlier than 2021-05-24 08:00 | Manager1ETF | 1h | 13 |
| 250 | 15.1.153 | 153 | 1h | 2021-05-31 08:00 | 2021-05-31 09:00 | 20d | start no earlier than 2021-05-31 08:00 | Manager1ETF | 1h | 13 |
| 251 | 15.1.154 | 154 | 1h | 2021-06-07 08:00 | 2021-06-07 09:00 | 15d | start no earlier than 2021-06-07 08:00 | Manager1ETF | 1h | 13 |
| 252 | 15.1.155 | 155 | 1h | 2021-06-14 08:00 | 2021-06-14 09:00 | 10d | start no earlier than 2021-06-14 08:00 | Manager1ETF | 1h | 13 |
| 253 | 15.1.156 | 156 | 1h | 2021-06-21 08:00 | 2021-06-21 09:00 | 5d | start no earlier than 2021-06-21 08:00 | Manager1ETF | 1h | 13 |
| 254 | 15.1.157 | 157 | 1h | 2021-06-28 08:00 | 2021-06-28 09:00 | 0d | start no earlier than 2021-06-28 08:00 | Manager1ETF | 1h | 13 |

| ID | WBS | Task | Type | Duration | Start | Finish | Predecessors | Total slack | Constraint | Resources | Work | Cost |
| --- | --- | --- | --- | --- | --- | --- | --- | --- | --- | --- | --- | --- |
| 255 | 15.2 | **3 Monthly report** |  | 720.12d | 2018-07-02 08:00 | 2021-04-05 09:00 |  | 60d |  |  | 12h | 156 |
| 256 | 15.2.1 | Monthly report 3 months 1 |  | 1h | 2018-07-02 08:00 | 2018-07-02 09:00 |  | 780d | start no earlier than 2018-07-02 08:00 | Manager1ETF | 1h | 13 |
| 257 | 15.2.2 | Monthly report 3 months 2 |  | 1h | 2018-10-01 08:00 | 2018-10-01 09:00 |  | 715d | start no earlier than 2018-10-01 08:00 | Manager1ETF | 1h | 13 |
| 258 | 15.2.3 | Monthly report 3 months 3 |  | 1h | 2019-01-07 08:00 | 2019-01-07 09:00 |  | 645d | start no earlier than 2019-01-07 08:00 | Manager1ETF | 1h | 13 |
| 259 | 15.2.4 | Monthly report 3 months 4 |  | 1h | 2019-04-01 08:00 | 2019-04-01 09:00 |  | 585d | start no earlier than 2019-04-01 08:00 | Manager1ETF | 1h | 13 |
| 260 | 15.2.5 | Monthly report 3 months 5 |  | 1h | 2019-07-01 08:00 | 2019-07-01 09:00 |  | 520d | start no earlier than 2019-07-01 08:00 | Manager1ETF | 1h | 13 |
| 261 | 15.2.6 | Monthly report 3 months 6 |  | 1h | 2019-10-07 08:00 | 2019-10-07 09:00 |  | 450d | start no earlier than 2019-10-07 08:00 | Manager1ETF | 1h | 13 |
| 262 | 15.2.7 | Monthly report 3 months 7 |  | 1h | 2020-01-06 08:00 | 2020-01-06 09:00 |  | 385d | start no earlier than 2020-01-06 08:00 | Manager1ETF | 1h | 13 |
| 263 | 15.2.8 | Monthly report 3 months 8 |  | 1h | 2020-04-06 08:00 | 2020-04-06 09:00 |  | 320d | start no earlier than 2020-04-06 08:00 | Manager1ETF | 1h | 13 |
| 264 | 15.2.9 | Monthly report 3 months 9 |  | 1h | 2020-07-06 08:00 | 2020-07-06 09:00 |  | 255d | start no earlier than 2020-07-06 08:00 | Manager1ETF | 1h | 13 |
| 265 | 15.2.10 | Monthly report 3 months 10 |  | 1h | 2020-10-05 08:00 | 2020-10-05 09:00 |  | 190d | start no earlier than 2020-10-05 08:00 | Manager1ETF | 1h | 13 |
| 266 | 15.2.11 | Monthly report 3 months 11 |  | 1h | 2021-01-04 08:00 | 2021-01-04 09:00 |  | 125d | start no earlier than 2021-01-04 08:00 | Manager1ETF | 1h | 13 |
| 267 | 15.2.12 | Monthly report 3 months 12 |  | 1h | 2021-04-05 08:00 | 2021-04-05 09:00 |  | 60d | start no earlier than 2021-04-05 08:00 | Manager1ETF | 1h | 13 |
| 268 | 15.3 | End of project report |  | 3d | 2021-06-28 09:00 | 2021-07-01 09:00 | 97, 255 | 0d |  | Manager1ETF | 24h | 312 |
| 269 | 16 | End of project report | milestone | 0d | 2021-07-01 09:00 | 2021-07-01 09:00 | 96, 95 | 0d |  |  |  |  |
